# V3.2

Schedule from MS Project, 2026-04-16 to 2026-06-22.

## Calendars

- 标准: Mon-Fri 08:00-12:00, 13:00-17:00; Sat-Sun off.

## Resources

| Resource | Group |
| --- | --- |
| 项目经理 | 管理 |
| 开发-企业端1 | 开发 |
| 开发-企业端2 | 开发 |
| 开发-市级端1 | 开发 |
| 开发-市级端2 | 开发 |
| 开发-省级端 | 开发 |
| 开发-公共模块 | 开发 |
| 测试人员1 | 测试 |
| 测试人员2 | 测试 |
| 运维人员 | 运维 |

## Schedule

| ID | WBS | Task | Type | Duration | Start | Finish | Predecessors | Baseline start | Baseline finish | Baseline duration | Resources | Work |
| --- | --- | --- | --- | --- | --- | --- | --- | --- | --- | --- | --- | --- |
| 1 | 1 | **项目启动** |  | 2d | 2026-04-16 | 2026-04-17 |  | 2026-04-16 | 2026-04-17 | 2d |  | 16h |
| 2 | 1.1 | 项目立项 | manual | 1d | 2026-04-16 | 2026-04-16 |  | 2026-04-16 | 2026-04-16 | 1d | 项目经理 | 8h |
| 3 | 1.2 | 项目计划制定 | manual | 1d | 2026-04-17 | 2026-04-17 | 2 | 2026-04-17 | 2026-04-17 | 1d | 项目经理 | 8h |
| 4 | 2 | **需求分析** |  | 5d | 2026-04-20 | 2026-04-24 |  | 2026-04-20 | 2026-04-24 | 5d |  | 40h |
| 5 | 2.1 | 业务流程分析 | manual | 2d | 2026-04-20 | 2026-04-21 | 3 | 2026-04-20 | 2026-04-21 | 2d | 项目经理 | 16h |
| 6 | 2.2 | 数据需求分析 | manual | 2d | 2026-04-22 | 2026-04-23 | 5 | 2026-04-22 | 2026-04-23 | 2d | 项目经理 | 16h |
| 7 | 2.3 | 需求评审 | manual | 1d | 2026-04-24 | 2026-04-24 | 6 | 2026-04-24 | 2026-04-24 | 1d | 项目经理 | 8h |
| 8 | 3 | **系统设计** |  | 5d | 2026-04-27 | 2026-05-01 |  | 2026-04-27 | 2026-05-01 | 5d |  | 40h |
| 9 | 3.1 | 架构设计 | manual | 2d | 2026-04-27 | 2026-04-28 | 7 | 2026-04-27 | 2026-04-28 | 2d | 项目经理 | 16h |
| 10 | 3.2 | 数据库设计 | manual | 2d | 2026-04-29 | 2026-04-30 | 9 | 2026-04-29 | 2026-04-30 | 2d | 项目经理 | 16h |
| 11 | 3.3 | 界面设计 | manual | 1d | 2026-05-01 | 2026-05-01 | 10 | 2026-05-01 | 2026-05-01 | 1d | 项目经理 | 8h |
| 12 | 4 | **系统开发** |  | 24d | 2026-05-04 | 2026-06-04 |  | 2026-05-04 | 2026-05-29 | 20d |  | 728h |
| 13 | 4.1 | **企业端开发** |  | 24d | 2026-05-04 | 2026-06-04 |  | 2026-05-04 | 2026-05-29 | 20d |  | 384h |
| 14 | 4.1.1 | 数据填报功能 | manual | 10d | 2026-05-04 | 2026-05-15 | 11 | 2026-05-04 | 2026-05-15 | 10d | 开发-企业端1; 开发-企业端2 | 160h |
| 15 | 4.1.2 | 信息查询功能 | manual | 10d | 2026-05-18 | 2026-05-29 | 14 | 2026-05-18 | 2026-05-29 | 10d | 开发-企业端1; 开发-企业端2 | 160h |
| 16 | 4.1.3 | 报表周期配置 | manual | 2d | 2026-06-01 | 2026-06-02 | 15 |  |  |  | 开发-企业端1; 开发-企业端2 | 32h |
| 17 | 4.1.4 | 半月报表开发 | manual | 2d | 2026-06-03 | 2026-06-04 | 16 |  |  |  | 开发-企业端1; 开发-企业端2 | 32h |
| 18 | 4.2 | **市级端开发** |  | 12d | 2026-05-04 | 2026-05-19 |  | 2026-05-04 | 2026-05-19 | 12d |  | 192h |
| 19 | 4.2.1 | 数据审核功能 | manual | 6d | 2026-05-04 | 2026-05-11 | 11 | 2026-05-04 | 2026-05-11 | 6d | 开发-市级端1; 开发-市级端2 | 96h |
| 20 | 4.2.2 | 通知发布功能 | manual | 6d | 2026-05-12 | 2026-05-19 | 19 | 2026-05-12 | 2026-05-19 | 6d | 开发-市级端1; 开发-市级端2 | 96h |
| 21 | 4.3 | **省级端开发** |  | 11d | 2026-05-04 | 2026-05-18 |  | 2026-05-04 | 2026-05-15 | 10d |  | 88h |
| 22 | 4.3.1 | 数据汇总功能 | manual | 5d | 2026-05-04 | 2026-05-08 | 11 | 2026-05-04 | 2026-05-08 | 5d | 开发-省级端 | 40h |
| 23 | 4.3.2 | 统计分析功能 | manual | 5d | 2026-05-11 | 2026-05-15 | 22 | 2026-05-11 | 2026-05-15 | 5d | 开发-省级端 | 40h |
| 24 | 4.3.3 | 报表统计周期适配 | manual | 1d | 2026-05-18 | 2026-05-18 | 23 |  |  |  | 开发-省级端 | 8h |

| ID | WBS | Task | Type | Duration | Start | Finish | Predecessors | Baseline start | Baseline finish | Baseline duration | Resources | Work |
| --- | --- | --- | --- | --- | --- | --- | --- | --- | --- | --- | --- | --- |
| 25 | 4.4 | **公共模块开发** |  | 8d | 2026-05-04 | 2026-05-13 |  | 2026-05-04 | 2026-05-13 | 8d |  | 64h |
| 26 | 4.4.1 | 登录功能 | manual | 3d | 2026-05-04 | 2026-05-06 | 11 | 2026-05-04 | 2026-05-06 | 3d | 开发-公共模块 | 24h |
| 27 | 4.4.2 | 权限管理 | manual | 3d | 2026-05-07 | 2026-05-11 | 26 | 2026-05-07 | 2026-05-11 | 3d | 开发-公共模块 | 24h |
| 28 | 4.4.3 | 数据接口 | manual | 2d | 2026-05-12 | 2026-05-13 | 27 | 2026-05-12 | 2026-05-13 | 2d | 开发-公共模块 | 16h |
| 29 | 5 | **系统测试** |  | 9d | 2026-06-05 | 2026-06-17 |  | 2026-06-01 | 2026-06-09 | 7d |  | 144h |
| 30 | 5.1 | 单元测试 | manual | 3d | 2026-06-05 | 2026-06-09 | 20, 28, 17, 24 | 2026-06-01 | 2026-06-03 | 3d | 测试人员1; 测试人员2 | 48h |
| 31 | 5.2 | 集成测试 | manual | 2d | 2026-06-10 | 2026-06-11 | 30 | 2026-06-04 | 2026-06-05 | 2d | 测试人员1; 测试人员2 | 32h |
| 32 | 5.3 | 系统测试执行 | manual | 2d | 2026-06-12 | 2026-06-15 | 31 | 2026-06-08 | 2026-06-09 | 2d | 测试人员1; 测试人员2 | 32h |
| 33 | 5.4 | 报表周期测试 | manual | 2d | 2026-06-16 | 2026-06-17 | 32 |  |  |  | 测试人员1; 测试人员2 | 32h |
| 34 | 6 | **部署验收** |  | 3d | 2026-06-18 | 2026-06-22 |  | 2026-06-10 | 2026-06-12 | 3d |  | 24h |
| 35 | 6.1 | 系统部署 | manual | 1d | 2026-06-18 | 2026-06-18 | 33, 32 | 2026-06-10 | 2026-06-10 | 1d | 运维人员 | 8h |
| 36 | 6.2 | 用户培训 | manual | 1d | 2026-06-19 | 2026-06-19 | 35 | 2026-06-11 | 2026-06-11 | 1d | 运维人员 | 8h |
| 37 | 6.3 | 验收测试 | manual | 1d | 2026-06-22 | 2026-06-22 | 36 | 2026-06-12 | 2026-06-12 | 1d | 运维人员 | 8h |
